# План этапа Автоматизация расчета спецификаций проекта Единый прайс

Schedule from MS Project, 2015-02-06 to 2015-03-01, costs in р..
Microsoft

## Calendars

- Стандартный: Mon-Fri 09:00-13:00, 14:00-18:00; Sat-Sun off. Exceptions (off unless hours are given): 2015-02-01 to 2015-04-01 09:00-13:00, 14:00-18:00.

## Resources

| Resource |
| --- |
| Менеджер |
| Программист |

## Schedule

| ID | WBS | Task | Type | Duration | Start | Finish | Predecessors | Baseline start | Baseline finish | Baseline duration | Baseline 1 start | Baseline 1 finish | Total slack | Free slack | Constraint | Resources | Work | Cost | Baseline cost |
| --- | --- | --- | --- | --- | --- | --- | --- | --- | --- | --- | --- | --- | --- | --- | --- | --- | --- | --- | --- |
| 1 | 1 | **<Расчет спецификаций конкурсов>** |  | 24d? | 2015-02-06 | 2015-03-01 |  | 2015-02-06 | 2015-03-31 | 38d? | 2015-02-06 | 2015-03-05 | 0d |  |  |  | 125.6h | 69,000 | 69,000 |
| 2 | 1.1 | Разработать и согласовать устав этапа проекта |  | 1d | 2015-02-06 | 2015-02-06 |  | 2015-02-06 | 2015-02-06 | 1d | 2015-02-06 | 2015-02-06 | 0d |  | start no earlier than 2015-02-06 | Менеджер [80%] | 6.4h |  |  |
| 3 | 1.2 | Разработать принципиальную схему программы |  | 2d? | 2015-02-07 | 2015-02-08 | 2 | 2015-02-23 | 2015-02-24 | 2d? | 2015-02-07 | 2015-02-08 | 18d | 1d |  | Менеджер [80%] | 12.8h |  |  |
| 4 | 1.3 | Разработать макет интерфейса программы |  | 1d? | 2015-02-09 | 2015-02-09 | 2 | 2015-02-25 | 2015-02-25 | 1d? | 2015-02-09 | 2015-02-09 | 17d | 0d |  | Менеджер [80%] | 6.4h |  |  |
| 5 | 1.4 | Составить почасовой план работ |  | 2d? | 2015-02-10 | 2015-02-12 | 4, 3 | 2015-02-26 | 2015-02-27 | 2d? | 2015-02-10 | 2015-02-11 | 17d | 18d |  | Менеджер [80%] | 12.8h |  |  |
| 6 | 1.5 | Найти программиста |  | 4d | 2015-02-07 | 2015-02-10 | 2 | 2015-02-23 | 2015-02-27 | 5d? | 2015-02-07 | 2015-02-11 | 0d |  |  | Менеджер [20%] | 6.4h |  |  |
| 7 | 1.6 | Заключить договор с программистом | milestone | 0d | 2015-02-10 | 2015-02-10 | 6 | 2015-03-02 | 2015-03-04 | 3d? | 2015-02-12 | 2015-02-14 | 0d |  |  | Менеджер [20%] |  |  |  |
| 8 | 1.7 | Поставить задачу программисту |  | 1d | 2015-02-11 | 2015-02-11 | 7 | 2015-03-05 | 2015-03-05 | 1d | 2015-02-15 | 2015-02-15 | 0d |  |  | Менеджер | 8h |  |  |
| 9 | 1.8 | Разработка, контроль |  | 10d | 2015-02-12 | 2015-02-21 | 8 | 2015-03-06 | 2015-03-19 | 10d | 2015-02-16 | 2015-02-25 | 0d |  |  | Менеджер [20%]; Программист [0.1%] | 16h | 69,000 | 69,000 |
| 10 | 1.9 | Тестирование, доработка |  | 3d? | 2015-02-22 | 2015-02-24 | 9 | 2015-03-20 | 2015-03-24 | 3d? | 2015-02-26 | 2015-02-28 | 0d |  |  | Менеджер | 24h |  |  |
| 11 | 1.10 | Инсталляция на сервере ЮНИТ |  | 1d? | 2015-02-25 | 2015-02-25 | 10 | 2015-03-25 | 2015-03-25 | 1d? | 2015-03-01 | 2015-03-01 | 0d |  |  | Менеджер | 8h |  |  |
| 12 | 1.11 | Провести приемочные испытания, подписать акт приемки |  | 1d | 2015-02-26 | 2015-02-26 | 11 | 2015-03-26 | 2015-03-26 | 1d | 2015-03-02 | 2015-03-02 | 0d |  |  | Менеджер [50%] | 4h |  |  |
| 13 | 1.12 | Разработка инструкции |  | 2d? | 2015-02-27 | 2015-02-28 | 12 | 2015-03-27 | 2015-03-30 | 2d? | 2015-03-03 | 2015-03-04 | 1d | 0d |  | Менеджер [80%] | 12.8h |  |  |
| 14 | 1.13 | Ввод в опытно-промышленную эксплуатацию |  | 1d | 2015-03-01 | 2015-03-01 | 12 | 2015-03-31 | 2015-03-31 | 1d | 2015-03-05 | 2015-03-05 | 0d |  |  | Менеджер | 8h |  |  |
